# Veteran Connect Post-2026 PI Claim Starter Pack MVP

Schedule from ProjectLibre, 2026-05-11 to 2026-11-20.

## Calendars

- Standard[Imported]: Mon-Fri 08:00-12:00, 13:00-17:00; Sat-Sun off.

## Resources

| Resource | Group |
| --- | --- |
| Unassigned |  |
| Product / Compliance | MVP Build |
| Cloud / DevOps | MVP Build |
| Backend | MVP Build |
| Web | MVP Build |
| AI / Knowledge | MVP Build |
| Documents | MVP Build |
| Mobile | MVP Build |
| Security / QA | MVP Build |
| Pilot / Operations | MVP Build |

## Schedule

| ID | WBS | Task | Type | Duration | Start | Finish | Predecessors | Complete | Baseline start | Baseline finish | Constraint | Resources |
| --- | --- | --- | --- | --- | --- | --- | --- | --- | --- | --- | --- | --- |
| 1 | 1 | **Phase 1: Product scope and compliance foundation** |  | 1d? | 2026-05-11 | 2026-05-11 |  | 100% | 2026-05-11 | 2026-06-03 |  |  |
| 2 | 1.1 | Confirm MVP product definition |  | 1d | 2026-05-11 | 2026-05-11 |  | 100% | 2026-05-11 | 2026-05-20 |  |  |
| 3 | 1.2 | Confirm version 1 exclusions |  | 1d | 2026-05-11 | 2026-05-11 | 2 | 100% | 2026-05-11 | 2026-05-11 |  |  |
| 4 | 1.3 | Define supported post-2026 claim scenarios |  | 1d | 2026-05-11 | 2026-05-11 | 3 | 100% | 2026-05-12 | 2026-05-12 |  |  |
| 5 | 1.4 | Draft disclaimer and AI-use wording |  | 1d? | 2026-05-11 | 2026-05-11 | 4 | 100% | 2026-05-13 | 2026-05-13 |  |  |
| 6 | 1.5 | Define first user journey |  | 1d? | 2026-05-11 | 2026-05-11 | 5 | 100% | 2026-05-14 | 2026-05-14 |  |  |
| 7 | 1.6 | Define MVP feature list |  | 1d? | 2026-05-11 | 2026-05-11 | 6 | 100% | 2026-05-15 | 2026-05-15 |  |  |
| 8 | 1.7 | Define first data objects |  | 1d? | 2026-05-11 | 2026-05-11 | 7 | 100% | 2026-05-18 | 2026-05-18 | start no earlier than 2026-05-11 |  |
| 9 | 1.8 | Define Phase 1 acceptance criteria |  | 1d? | 2026-05-11 | 2026-05-11 | 8 | 100% | 2026-05-19 | 2026-05-19 | start no earlier than 2026-05-11 |  |
| 10 | 1.9 | Review Phase 1 pack before build starts |  | 1d? | 2026-05-11 | 2026-05-11 | 9 | 100% | 2026-05-20 | 2026-05-20 |  |  |
| 11 | 2 | **Phase 2: Google Cloud foundation** |  | 2d? | 2026-05-11 | 2026-05-12 |  | 100% | 2026-06-04 | 2026-06-17 |  |  |
| 12 | 2.1 | Create Google Cloud dev/test/prod project structure |  | 2d? | 2026-05-11 | 2026-05-12 | 10 | 100% | 2026-06-04 | 2026-06-05 |  | Cloud / DevOps |
| 13 | 2.2 | Enable core Google Cloud services |  | 1d? | 2026-05-11 | 2026-05-11 | 12 | 100% | 2026-06-08 | 2026-06-08 |  | Cloud / DevOps |
| 14 | 2.3 | Configure IAM, service accounts and Secret Manager |  | 2d? | 2026-05-11 | 2026-05-12 | 13 | 100% | 2026-06-09 | 2026-06-10 |  | Cloud / DevOps |
| 15 | 2.4 | Create baseline IAM/service account plan |  | 1d? | 2026-05-11 | 2026-05-11 | 14 | 100% |  |  |  |  |
| 16 | 2.5 | Create dev service accounts |  | 1d? | 2026-05-11 | 2026-05-11 | 15 | 100% |  |  |  |  |
| 17 | 2.6 | Verify dev service accounts |  | 1d? | 2026-05-11 | 2026-05-11 | 16 | 100% |  |  |  |  |
| 18 | 2.7 | Create Secret Manager baseline plan |  | 1d? | 2026-05-11 | 2026-05-11 | 17 | 100% |  |  |  |  |
| 19 | 2.8 | Create initial placeholder secrets |  | 1d? | 2026-05-11 | 2026-05-11 | 18 | 100% |  |  |  |  |
| 20 | 2.9 | Save IAM and Secret Manager setup notes |  | 1d? | 2026-05-11 | 2026-05-11 | 19 | 100% |  |  |  |  |
| 21 | 2.4 | Configure Firebase Authentication and App Check |  | 2d? | 2026-05-11 | 2026-05-12 | 20 | 100% | 2026-06-11 | 2026-06-12 |  | Cloud / DevOps |
| 22 | 2.5 | Create Cloud Run API skeleton and CI/CD |  | 2d? | 2026-05-11 | 2026-05-12 | 21 | 100% | 2026-06-15 | 2026-06-16 |  | Cloud / DevOps |
| 23 | 2.6 | Provision Cloud SQL PostgreSQL and Cloud Storage buckets |  | 1d? | 2026-05-11 | 2026-05-11 | 22 | 100% | 2026-06-17 | 2026-06-17 |  | Cloud / DevOps |
| 24 | 2.13 | Connect Cloud Run API to Cloud SQL and Secret Manager |  | 1d? | 2026-05-11 | 2026-05-11 | 23 | 100% |  |  |  |  |
| 25 | 2.M | Milestone: Phase 2 complete | milestone | 0d? | 2026-05-11 | 2026-05-11 | 24 | 100% | 2026-06-17 | 2026-06-17 |  | Cloud / DevOps |

Notes:
- 1: MVP boundaries, post-2026 claim scenarios, disclaimers, privacy wording and first user journey are agreed.
- 2: Required before build starts
- 3: Locks out scoring, compensation estimates and outcome prediction
- 4: Defines new condition, worsening, new plus existing, evidence prep and unsure scenarios
- 5: Required before onboarding and AI outputs
- 6: Provides build path for wireframes and API design
- 7: Locks initial build scope
- 8: Feeds database schema planning
- 9: Defines done for Phase 1
- 10: Final gate before Phase 2 cloud setup
- 11: Cloud Run, Cloud SQL, Cloud Storage, Firebase Authentication, Secret Manager and CI/CD foundation are working in dev/test.
- 12: Set up initial environment separation and naming conventions. New Google Cloud project creation failed due to project quota. Plan B adopted: use existing project dva-sop-dev with logical environment prefixes vapi-dev, vapi-test and vapi-prod. Split into separate projects later after quota increase.
- 13: Enable Cloud Run, Cloud SQL, Cloud Storage, Secret Manager, Cloud Build, Artifact Registry, Vertex AI, Document AI, Logging and Monitoring.
- 14: Set least-privilege service accounts and store all secrets outside source control.
- 21: Set up auth for web/mobile and basic client abuse protection.
- 22: Deploy a minimal ASP.NET Core API to Cloud Run from source control.
- 23: Create private storage buckets and initial database instance.
- 25: Cloud Run, Cloud SQL, Cloud Storage, Firebase Authentication, Secret Manager and CI/CD foundation are working in dev/test.

| ID | WBS | Task | Type | Duration | Start | Finish | Predecessors | Complete | Baseline start | Baseline finish | Resources |
| --- | --- | --- | --- | --- | --- | --- | --- | --- | --- | --- | --- |
| 26 | 3 | **Phase 3: Core backend and database** |  | 4d? | 2026-05-12 | 2026-05-15 |  | 100% | 2026-06-18 | 2026-07-15 |  |
| 27 | 3.1 | Create database schema and migrations |  | 3d? | 2026-05-12 | 2026-05-14 | 25 | 100% | 2026-06-18 | 2026-06-22 | Backend |
| 28 | 3.2 | Implement Firebase token verification and user service |  | 3d? | 2026-05-12 | 2026-05-14 | 27 | 100% | 2026-06-23 | 2026-06-25 | Backend |
| 29 | 3.3 | Build claim workspace API (CRUD) |  | 4d? | 2026-05-12 | 2026-05-15 | 28 | 100% | 2026-06-26 | 2026-07-01 | Backend |
| 30 | 3.4 | Build condition and accepted-condition history APIs |  | 4d? | 2026-05-12 | 2026-05-15 | 29 | 100% | 2026-07-02 | 2026-07-07 | Backend |
| 31 | 3.5 | Build guided question response API |  | 1d? | 2026-05-12 | 2026-05-12 | 30 | 100% |  |  |  |
| 32 | 3.5 | Build evidence metadata and audit APIs |  | 3d? | 2026-05-12 | 2026-05-14 | 31 | 100% | 2026-07-08 | 2026-07-10 | Backend |
| 33 | 3.7 | Build evidence upload URL API |  | 1d? | 2026-05-12 | 2026-05-12 | 32 | 100% |  |  |  |
| 34 | 3.8 | Build evidence gap tracker API |  | 1d? | 2026-05-12 | 2026-05-12 | 33 | 100% |  |  |  |
| 35 | 3.9 | Build AI draft metadata API |  | 1d? | 2026-05-12 | 2026-05-12 | 34 | 100% |  |  |  |
| 36 | 3.10 | Build generated document metadata API |  | 1d? | 2026-05-12 | 2026-05-12 | 35 | 100% |  |  |  |
| 37 | 3.11 | Refactor shared auth and ownership helpers |  | 1d? | 2026-05-12 | 2026-05-12 | 36 | 100% |  |  |  |
| 38 | 3.12 | Create API smoke test script |  | 1d? | 2026-05-12 | 2026-05-12 | 37 | 100% |  |  |  |
| 39 | 3.13 | Redeploy and verify Phase 3 backend |  | 1d? | 2026-05-12 | 2026-05-12 | 38 | 100% |  |  |  |
| 40 | 3.6 | Add backend tests and API documentation |  | 3d? | 2026-05-12 | 2026-05-14 | 39 | 100% | 2026-07-13 | 2026-07-15 | Backend |
| 41 | 3.M | Milestone: Phase 3 complete | milestone | 0d? | 2026-05-12 | 2026-05-12 | 40 | 100% | 2026-07-15 | 2026-07-15 | Backend |
| 42 | 4 | **Phase 4: Web MVP shell** |  | 1d? | 2026-05-12 | 2026-05-12 | 40 | 100% | 2026-07-16 | 2026-08-05 |  |
| 43 | 4.1 | Create Next.js app scaffolding and routing |  | 1d | 2026-05-12 | 2026-05-12 | 41 | 100% |  |  |  |
| 44 | 4.2 | Configure web app environment variables |  | 1d | 2026-05-12 | 2026-05-12 | 43 | 100% |  |  |  |
| 45 | 4.3 | Connect Firebase web authentication |  | 1d | 2026-05-12 | 2026-05-12 | 44 | 100% |  |  |  |
| 46 | 4.4 | Build login and session UI |  | 1d | 2026-05-12 | 2026-05-12 | 45 | 100% |  |  |  |
| 47 | 4.5 | Build dashboard and claim workspace list |  | 1d | 2026-05-12 | 2026-05-12 | 46 | 100% |  |  |  |
| 48 | 4.6 | Build new claim and pathway selector |  | 1d | 2026-05-12 | 2026-05-12 | 47 | 100% |  |  |  |
| 49 | 4.7 | Build claim workspace detail page |  | 1d | 2026-05-12 | 2026-05-12 | 48 | 100% |  |  |  |
| 50 | 4.8 | Build condition intake UI |  | 1d | 2026-05-12 | 2026-05-12 | 49 | 100% |  |  |  |
| 51 | 4.9 | Build accepted-condition history UI |  | 1d | 2026-05-12 | 2026-05-12 | 50 | 100% |  |  |  |
| 52 | 4.10 | Build guided question response UI |  | 1d | 2026-05-12 | 2026-05-12 | 51 | 100% |  |  |  |
| 53 | 4.11 | Build evidence checklist shell |  | 1d | 2026-05-12 | 2026-05-12 | 52 | 100% |  |  |  |
| 54 | 4.12 | Build evidence metadata UI |  | 1d | 2026-05-12 | 2026-05-12 | 53 | 100% |  |  |  |
| 55 | 4.13 | Build evidence upload UI |  | 1d | 2026-05-12 | 2026-05-12 | 54 | 100% |  |  |  |
| 56 | 4.1 | Build evidence gap tracker UI |  | 1d | 2026-05-12 | 2026-05-12 | 55 | 100% | 2026-07-16 | 2026-07-17 | Web |
| 57 | 4.2 | Build AI draft review UI |  | 1d | 2026-05-12 | 2026-05-12 | 56 | 100% | 2026-07-20 | 2026-07-22 | Web |
| 58 | 4.3 | Build generated document list UI |  | 1d | 2026-05-12 | 2026-05-12 | 57 | 100% | 2026-07-23 | 2026-07-27 | Web |
| 59 | 4.4 | Add protected route handling |  | 1d | 2026-05-12 | 2026-05-12 | 58 | 100% | 2026-07-28 | 2026-07-30 | Web |
| 60 | 4.5 | Add API client service layer |  | 1d | 2026-05-12 | 2026-05-12 | 59 | 100% | 2026-07-31 | 2026-08-04 | Web |
| 61 | 4.6 | Add web smoke test checklist |  | 1d | 2026-05-12 | 2026-05-12 | 60 | 100% | 2026-08-05 | 2026-08-05 | Web |
| 62 | 4.M | Milestone: Phase 4 complete | milestone | 0d? | 2026-05-12 | 2026-05-12 | 61 | 100% | 2026-08-05 | 2026-08-05 | Web |

Notes:
- 26: Backend can create users, claims, conditions, accepted-condition history, evidence metadata and audit events.
- 27: Implement users, claim_workspaces, conditions, accepted_condition_history, evidence_items, question_responses, evidence_gaps, ai_outputs, generated_documents and audit_events.
- 28: Verify identity tokens and map Firebase users to internal users.
- 29: Create, list, read and update post-2026 claim workspaces.
- 30: Capture condition details and previous VEA/DRCA/MRCA accepted condition history where relevant.
- 32: Store evidence records and auditable user/system actions.
- 40: Add smoke tests, basic API contract docs and error handling.
- 41: Backend can create users, claims, conditions, accepted-condition history, evidence metadata and audit events.
- 42: A user can log in, create a claim workspace, select a pathway and enter basic condition details in the web app.
- 56: Set up the web app structure, protected routes and base layout.
- 57: Connect Firebase sign-in to the backend session flow.
- 58: Show claim workspaces and basic workspace status.
- 59: Implement the post-2026 scenario selector as the first key workflow screen.
- 60: Capture initial condition details and diagnosis status.
- 61: Show the initial evidence checklist placeholder linked to a claim workspace.
- 62: A user can log in, create a claim workspace, select a pathway and enter basic condition details in the web app.

| ID | WBS | Task | Type | Duration | Start | Finish | Predecessors | Complete | Baseline start | Baseline finish | Resources |
| --- | --- | --- | --- | --- | --- | --- | --- | --- | --- | --- | --- |
| 63 | 5 | **Phase 5: GARP M-aware question engine** |  | 5d | 2026-05-13 | 2026-05-19 | 61 | 86% | 2026-08-06 | 2026-09-02 |  |
| 64 | 5.1 | Define Phase 5 scope and safety boundary |  | 1d | 2026-05-13 | 2026-05-13 | 62 | 100% |  |  |  |
| 65 | 5.2 | Create question template model |  | 1d | 2026-05-13 | 2026-05-13 | 64 | 100% |  |  |  |
| 66 | 5.3 | Create GARP M-aware question group structure |  | 1d | 2026-05-13 | 2026-05-13 | 65 | 100% |  |  |  |
| 67 | 5.4 | Build reusable question renderer |  | 1d | 2026-05-13 | 2026-05-13 | 66 | 100% |  |  |  |
| 68 | 5.5 | Build diagnosis, symptoms and treatment question group |  | 1d | 2026-05-13 | 2026-05-13 | 67 | 100% |  |  |  |
| 69 | 5.6 | Build stability and treatment response question group |  | 1d | 2026-05-13 | 2026-05-13 | 68 | 100% |  |  |  |
| 70 | 5.7 | Build functional, lifestyle and work impact question group |  | 1d | 2026-05-13 | 2026-05-13 | 69 | 100% |  |  |  |
| 71 | 5.8 | Build worsening and previous compensation question group |  | 1d | 2026-05-13 | 2026-05-13 | 70 | 100% |  |  |  |
| 72 | 5.9 | Build evidence gaps and appointment preparation question group |  | 1d | 2026-05-13 | 2026-05-13 | 71 | 100% |  |  |  |
| 73 | 5.10 | Connect question engine to existing question response API |  | 1d | 2026-05-13 | 2026-05-13 | 72 | 100% |  |  |  |
| 74 | 5.11 | Fix GARP M backend question group mapping |  | 1d | 2026-05-13 | 2026-05-13 | 73 | 100% |  |  |  |
| 75 | 5.12 | Improve GARP M date picker controls |  | 1d | 2026-05-13 | 2026-05-13 | 74 | 100% |  |  |  |
| 76 | 5.13 | Fix condition intake diagnosis status and date picker |  | 1d | 2026-05-13 | 2026-05-13 | 75 | 100% |  |  |  |
| 77 | 5.14 | Standardise remaining web date picker controls |  | 1d | 2026-05-13 | 2026-05-13 | 76 | 100% |  |  |  |
| 78 | 5.15 | Add save and resume support |  | 1d | 2026-05-13 | 2026-05-13 | 77 | 100% |  |  |  |
| 79 | 5.16 | Add validation and missing-answer prompts |  | 1d | 2026-05-13 | 2026-05-13 | 78 | 100% |  |  |  |
| 80 | 5.1 | Build structured assessment summary screen |  | 1d | 2026-05-13 | 2026-05-13 | 79 | 100% | 2026-08-06 | 2026-08-10 | Product / Compliance |
| 81 | 5.2 | Add workspace detail links to question engine |  | 1d | 2026-05-14 | 2026-05-14 | 80 | 100% | 2026-08-11 | 2026-08-14 | Product / Compliance |
| 82 | 5.3 | Add backend/frontend smoke test checklist updates |  | 1d | 2026-05-15 | 2026-05-15 | 81 |  | 2026-08-17 | 2026-08-21 | Product / Compliance |
| 83 | 5.4 | Add Phase 5 documentation |  | 1d | 2026-05-18 | 2026-05-18 | 82 |  | 2026-08-24 | 2026-08-27 | Product / Compliance |
| 84 | 5.5 | Milestone: Phase 5 complete |  | 1d | 2026-05-19 | 2026-05-19 | 83 |  | 2026-08-28 | 2026-09-02 | Product / Compliance |
| 85 | 6 | **Phase 6: Evidence upload and gap tracker** |  | 15d? | 2026-05-11 | 2026-05-29 |  |  | 2026-09-03 | 2026-09-23 |  |
| 86 | 6.1 | Build signed upload and download URL flow |  | 3d? | 2026-05-11 | 2026-05-13 |  |  | 2026-09-03 | 2026-09-07 | Backend |
| 87 | 6.2 | Build evidence item tagging and condition linking |  | 3d? | 2026-05-14 | 2026-05-18 | 86 |  | 2026-09-08 | 2026-09-10 | Backend |
| 88 | 6.3 | Build evidence status workflow |  | 3d? | 2026-05-19 | 2026-05-21 | 87 |  | 2026-09-11 | 2026-09-15 | Backend |
| 89 | 6.4 | Build evidence gap rules engine |  | 4d? | 2026-05-22 | 2026-05-27 | 88 |  | 2026-09-16 | 2026-09-21 | Backend |
| 90 | 6.5 | Build gap dashboard and reminder prompts |  | 2d? | 2026-05-28 | 2026-05-29 | 89 |  | 2026-09-22 | 2026-09-23 | Backend |
| 91 | 6.M | Milestone: Phase 6 complete | milestone | 0d? | 2026-05-29 | 2026-05-29 | 90 |  | 2026-09-23 | 2026-09-23 | Backend |

Notes:
- 63: The app guides the user through structured questions and produces a useful evidence summary without calculating points.
- 80: Make question groups configurable instead of hard-coded in screen logic.
- 81: Capture condition identity, diagnosis status, symptoms, treatment and medications.
- 82: Collect structured daily life and work impact evidence in plain English.
- 83: Capture previous DVA decision/assessment context and what has changed.
- 84: Generate a structured summary from saved answers for later AI and document output.
- 85: Users can upload evidence, tag it, link it to conditions and see missing-evidence prompts.
- 86: Keep files private and access them through controlled signed URLs.
- 87: Let users categorise documents and attach them to a condition.
- 88: Track missing, uploaded, requested, confirmed and not-required states.
- 89: Flag missing diagnosis evidence, treatment evidence, previous assessment letters, doctor reports and worsening evidence.
- 90: Display evidence gaps in a veteran-friendly checklist view.
- 91: Users can upload evidence, tag it, link it to conditions and see missing-evidence prompts.

| ID | WBS | Task | Type | Duration | Start | Finish | Predecessors | Baseline start | Baseline finish | Resources |
| --- | --- | --- | --- | --- | --- | --- | --- | --- | --- | --- |
| 92 | 7 | **Phase 7: AI/RAG knowledge base** |  | 25d? | 2026-05-11 | 2026-06-12 |  | 2026-09-03 | 2026-10-07 |  |
| 93 | 7.1 | Create approved source registry and knowledge base structure |  | 4d? | 2026-05-11 | 2026-05-14 |  | 2026-09-03 | 2026-09-08 | AI / Knowledge |
| 94 | 7.2 | Load GARP M, DVA reform references and internal templates |  | 4d? | 2026-05-15 | 2026-05-20 | 93 | 2026-09-09 | 2026-09-14 | AI / Knowledge |
| 95 | 7.3 | Build RAG retrieval API |  | 5d? | 2026-05-21 | 2026-05-27 | 94 | 2026-09-15 | 2026-09-21 | AI / Knowledge |
| 96 | 7.4 | Build prompt templates and safety guardrails |  | 4d? | 2026-05-28 | 2026-06-02 | 95 | 2026-09-22 | 2026-09-25 | AI / Knowledge |
| 97 | 7.5 | Generate veteran statement and worsening summary drafts |  | 4d? | 2026-06-03 | 2026-06-08 | 96 | 2026-09-28 | 2026-10-01 | AI / Knowledge |
| 98 | 7.6 | Generate doctor questions, evidence gap summary and doctor letter |  | 4d? | 2026-06-09 | 2026-06-12 | 97 | 2026-10-02 | 2026-10-07 | AI / Knowledge |
| 99 | 7.M | Milestone: Phase 7 complete | milestone | 0d? | 2026-06-12 | 2026-06-12 | 98 | 2026-10-07 | 2026-10-07 | AI / Knowledge |
| 100 | 8 | **Phase 8: Claim Starter Pack document generation** |  | 15d? | 2026-06-15 | 2026-07-03 |  | 2026-10-08 | 2026-10-28 |  |
| 101 | 8.1 | Design DOCX starter pack templates |  | 4d? | 2026-06-15 | 2026-06-18 | 91, 99 | 2026-10-08 | 2026-10-13 | Documents |
| 102 | 8.2 | Build document generation service |  | 4d? | 2026-06-19 | 2026-06-24 | 101 | 2026-10-14 | 2026-10-19 | Documents |
| 103 | 8.3 | Add PDF conversion and storage versioning |  | 3d? | 2026-06-25 | 2026-06-29 | 102 | 2026-10-20 | 2026-10-22 | Documents |
| 104 | 8.4 | Add document download signed URL flow |  | 2d? | 2026-06-30 | 2026-07-01 | 103 | 2026-10-23 | 2026-10-26 | Documents |
| 105 | 8.5 | Enforce reviewed-only content and test exports |  | 2d? | 2026-07-02 | 2026-07-03 | 104 | 2026-10-27 | 2026-10-28 | Documents |
| 106 | 8.M | Milestone: Phase 8 complete | milestone | 0d? | 2026-07-03 | 2026-07-03 | 105 | 2026-10-28 | 2026-10-28 | Documents |
| 107 | 9 | **Phase 9: Doctor guidance pack** |  | 10d? | 2026-07-06 | 2026-07-17 |  | 2026-10-29 | 2026-11-11 |  |
| 108 | 9.1 | Design doctor guidance pack template |  | 3d? | 2026-07-06 | 2026-07-08 | 106 | 2026-10-29 | 2026-11-02 | Documents |
| 109 | 9.2 | Build clinical question generation workflow |  | 3d? | 2026-07-09 | 2026-07-13 | 108 | 2026-11-03 | 2026-11-05 | Documents |
| 110 | 9.3 | Add doctor-specific disclaimer and review checklist |  | 2d? | 2026-07-14 | 2026-07-15 | 109 | 2026-11-06 | 2026-11-09 | Documents |
| 111 | 9.4 | Export and test doctor guidance pack |  | 2d? | 2026-07-16 | 2026-07-17 | 110 | 2026-11-10 | 2026-11-11 | Documents |
| 112 | 9.M | Milestone: Phase 9 complete | milestone | 0d? | 2026-07-17 | 2026-07-17 | 111 | 2026-11-11 | 2026-11-11 | Documents |
| 113 | 10 | **Phase 10: Admin knowledge and template manager** |  | 20d? | 2026-06-15 | 2026-07-10 |  | 2026-10-08 | 2026-11-04 |  |
| 114 | 10.1 | Build admin roles and access control |  | 3d? | 2026-06-15 | 2026-06-17 | 99 | 2026-10-08 | 2026-10-12 | Backend |
| 115 | 10.2 | Build source metadata manager |  | 4d? | 2026-06-18 | 2026-06-23 | 114 | 2026-10-13 | 2026-10-16 | Backend |
| 116 | 10.3 | Build question and document template editor |  | 5d? | 2026-06-24 | 2026-06-30 | 115 | 2026-10-19 | 2026-10-23 | Backend |
| 117 | 10.4 | Build prompt and disclaimer versioning |  | 4d? | 2026-07-01 | 2026-07-06 | 116 | 2026-10-26 | 2026-10-29 | Backend |
| 118 | 10.5 | Build knowledge base audit review view |  | 4d? | 2026-07-07 | 2026-07-10 | 117 | 2026-10-30 | 2026-11-04 | Backend |
| 119 | 10.M | Milestone: Phase 10 complete | milestone | 0d? | 2026-07-10 | 2026-07-10 | 118 | 2026-11-04 | 2026-11-04 | Backend |

Notes:
- 92: The app generates grounded drafts from user facts and approved knowledge only, with source references and review warnings.
- 93: Store source metadata, versioning, titles, URLs, summaries and approved excerpts/templates.
- 94: Seed the first approved knowledge collection and plain-English templates.
- 95: Retrieve relevant source material before asking Gemini to draft content.
- 96: Prevent outcome predictions, GARP scoring, fake medical facts and unsupported claims.
- 97: Create first AI drafting workflows from user-entered facts.
- 98: Create additional AI outputs for the starter pack and doctor prep workflow.
- 99: The app generates grounded drafts from user facts and approved knowledge only, with source references and review warnings.
- 100: The app generates and stores a DOCX/PDF Post-2026 PI Claim Starter Pack using confirmed content only.
- 101: Create cover page, disclaimer, condition summary, evidence checklist, gap tracker, statement draft and review checklist sections.
- 102: Generate DOCX from structured claim workspace data and approved drafts.
- 103: Create PDF output and keep document versions in Cloud Storage.
- 104: Allow secure document download from the web/mobile clients.
- 105: Ensure only user-confirmed answers and approved AI drafts are exported.
- 106: The app generates and stores a DOCX/PDF Post-2026 PI Claim Starter Pack using confirmed content only.
- 107: The app generates a doctor-facing guidance pack with clinical questions and careful disclaimers.
- 108: Create a separate doctor-facing document structure.
- 109: Use condition facts and evidence gaps to prepare doctor appointment questions.
- 110: Make clear the document does not ask the doctor to provide legal advice or a DVA decision.
- 111: Generate DOCX/PDF and verify readability.
- 112: The app generates a doctor-facing guidance pack with clinical questions and careful disclaimers.
- 113: An admin can update sources, question wording, templates, prompts and disclaimers without app code changes.
- 114: Restrict knowledge/template editing to authorised admin users.
- 115: Manage approved source titles, URLs, version dates, notes and usage status.
- 116: Allow controlled updates to question text and document templates.
- 117: Version prompts and disclaimers used in AI and exported documents.
- 118: Show what source/template/prompt version was used for each AI output.
- 119: An admin can update sources, question wording, templates, prompts and disclaimers without app code changes.

| ID | WBS | Task | Type | Duration | Start | Finish | Predecessors | Baseline start | Baseline finish | Resources |
| --- | --- | --- | --- | --- | --- | --- | --- | --- | --- | --- |
| 120 | 11 | **Phase 11: Android and iOS app MVP** |  | 40d? | 2026-07-06 | 2026-08-28 |  | 2026-10-29 | 2026-12-23 |  |
| 121 | 11.1 | Create MAUI app shell and shared services |  | 5d? | 2026-07-06 | 2026-07-10 | 106 | 2026-10-29 | 2026-11-04 | Mobile |
| 122 | 11.2 | Integrate Firebase Authentication |  | 5d? | 2026-07-13 | 2026-07-17 | 121 | 2026-11-05 | 2026-11-11 | Mobile |
| 123 | 11.3 | Build dashboard and claim workspace screens |  | 6d? | 2026-07-20 | 2026-07-27 | 122 | 2026-11-12 | 2026-11-19 | Mobile |
| 124 | 11.4 | Build condition intake and question engine screens |  | 8d? | 2026-07-28 | 2026-08-06 | 123 | 2026-11-20 | 2026-12-01 | Mobile |
| 125 | 11.5 | Build evidence checklist and upload flow |  | 7d? | 2026-08-07 | 2026-08-17 | 124 | 2026-12-02 | 2026-12-10 | Mobile |
| 126 | 11.6 | Build AI draft review and document download screens |  | 6d? | 2026-08-18 | 2026-08-25 | 125 | 2026-12-11 | 2026-12-18 | Mobile |
| 127 | 11.7 | Complete Android and iOS device testing |  | 3d? | 2026-08-26 | 2026-08-28 | 126 | 2026-12-21 | 2026-12-23 | Mobile |
| 128 | 11.M | Milestone: Phase 11 complete | milestone | 0d? | 2026-08-28 | 2026-08-28 | 127 | 2026-12-23 | 2026-12-23 | Mobile |
| 129 | 12 | **Phase 12: Security, privacy and production hardening** |  | 30d? | 2026-07-06 | 2026-08-14 |  | 2026-10-29 | 2026-12-09 |  |
| 130 | 12.1 | Review RBAC enforcement and audit logging |  | 5d? | 2026-07-06 | 2026-07-10 | 106 | 2026-10-29 | 2026-11-04 | Security / QA |
| 131 | 12.2 | Build data export and deletion workflows |  | 5d? | 2026-07-13 | 2026-07-17 | 130 | 2026-11-05 | 2026-11-11 | Security / QA |
| 132 | 12.3 | Create backup and disaster recovery process |  | 4d? | 2026-07-20 | 2026-07-23 | 131 | 2026-11-12 | 2026-11-17 | Security / QA |
| 133 | 12.4 | Add rate limiting, monitoring and error alerts |  | 4d? | 2026-07-24 | 2026-07-29 | 132 | 2026-11-18 | 2026-11-23 | Security / QA |
| 134 | 12.5 | Add consent tracking and AI disclosure tracking |  | 4d? | 2026-07-30 | 2026-08-04 | 133 | 2026-11-24 | 2026-11-27 | Security / QA |
| 135 | 12.6 | Draft privacy policy, terms and support process |  | 4d? | 2026-08-05 | 2026-08-10 | 134 | 2026-11-30 | 2026-12-03 | Security / QA |
| 136 | 12.7 | Prepare penetration test and remediation buffer |  | 4d? | 2026-08-11 | 2026-08-14 | 135 | 2026-12-04 | 2026-12-09 | Security / QA |
| 137 | 12.M | Milestone: Phase 12 complete | milestone | 0d? | 2026-08-14 | 2026-08-14 | 136 | 2026-12-09 | 2026-12-09 | Security / QA |
| 138 | 13 | **Phase 13: Private pilot** |  | 30d? | 2026-08-31 | 2026-10-09 |  | 2026-12-24 | 2027-02-03 |  |
| 139 | 13.1 | Recruit and onboard private pilot users |  | 5d? | 2026-08-31 | 2026-09-04 | 119, 128, 137 | 2026-12-24 | 2026-12-30 | Pilot / Operations |
| 140 | 13.2 | Run support and feedback capture process |  | 5d? | 2026-09-07 | 2026-09-11 | 139 | 2026-12-31 | 2027-01-06 | Pilot / Operations |
| 141 | 13.3 | Test veteran claim-preparation workflow |  | 5d? | 2026-09-14 | 2026-09-18 | 140 | 2027-01-07 | 2027-01-13 | Pilot / Operations |
| 142 | 13.4 | Review doctor and advocate pack usefulness |  | 5d? | 2026-09-21 | 2026-09-25 | 141 | 2027-01-14 | 2027-01-20 | Pilot / Operations |
| 143 | 13.5 | Fix priority issues from pilot |  | 6d? | 2026-09-28 | 2026-10-05 | 142 | 2027-01-21 | 2027-01-28 | Pilot / Operations |
| 144 | 13.6 | Prepare pilot outcome report and go/no-go decision |  | 4d? | 2026-10-06 | 2026-10-09 | 143 | 2027-01-29 | 2027-02-03 | Pilot / Operations |
| 145 | 13.M | Milestone: Phase 13 complete | milestone | 0d? | 2026-10-09 | 2026-10-09 | 144 | 2027-02-03 | 2027-02-03 | Pilot / Operations |

Notes:
- 120: Android and iOS can complete the main claim starter pack workflow against the same backend as the web app.
- 121: Set up cross-platform app navigation and backend client services.
- 122: Implement login/session flow for mobile.
- 123: Show workspaces and workspace status on mobile.
- 124: Support the key evidence collection workflow on mobile.
- 125: Upload evidence files/photos and show the gap tracker.
- 126: Review AI outputs and download generated packs.
- 127: Smoke test on real/simulator devices and fix platform-specific issues.
- 128: Android and iOS can complete the main claim starter pack workflow against the same backend as the web app.
- 129: The platform is suitable for a controlled private pilot with sensitive information under strict safeguards.
- 130: Verify all user actions and sensitive operations are permissioned and logged.
- 131: Allow user data export and deletion handling.
- 132: Set backups, restore procedures and recovery expectations.
- 133: Improve abuse protection and operational visibility.
- 134: Record accepted consent and AI-use disclosure versions.
- 135: Prepare launch/pilot legal-adjacent operational material for review.
- 136: Run security review preparation and fix priority findings.
- 137: The platform is suitable for a controlled private pilot with sensitive information under strict safeguards.
- 138: Pilot evidence shows the workflow is useful, understandable, safe and worth commercialising.
- 139: Bring in a small controlled group of veterans, doctors or advocates.
- 140: Collect structured feedback and support issues.
- 141: Measure whether users can complete the claim workspace and starter pack workflow.
- 142: Get feedback on clinical questions, pack clarity and disclaimers.
- 143: Resolve critical usability, safety, content and technical issues.
- 144: Summarise findings and decide what is required before commercial launch.
- 145: Pilot evidence shows the workflow is useful, understandable, safe and worth commercialising.

| ID | WBS | Task | Type | Duration | Start | Finish | Predecessors | Baseline start | Baseline finish | Resources |
| --- | --- | --- | --- | --- | --- | --- | --- | --- | --- | --- |
| 146 | 14 | **Phase 14: Commercial launch preparation** |  | 30d? | 2026-10-12 | 2026-11-20 |  | 2027-02-04 | 2027-03-17 |  |
| 147 | 14.1 | Decide and implement billing/subscription model |  | 5d? | 2026-10-12 | 2026-10-16 | 145 | 2027-02-04 | 2027-02-10 | Pilot / Operations |
| 148 | 14.2 | Build organisation account model |  | 5d? | 2026-10-19 | 2026-10-23 | 147 | 2027-02-11 | 2027-02-17 | Pilot / Operations |
| 149 | 14.3 | Set up support inbox and help centre |  | 5d? | 2026-10-26 | 2026-10-30 | 148 | 2027-02-18 | 2027-02-24 | Pilot / Operations |
| 150 | 14.4 | Create marketing site and onboarding content |  | 5d? | 2026-11-02 | 2026-11-06 | 149 | 2027-02-25 | 2027-03-03 | Pilot / Operations |
| 151 | 14.5 | Prepare App Store and Play Store materials |  | 5d? | 2026-11-09 | 2026-11-13 | 150 | 2027-03-04 | 2027-03-10 | Pilot / Operations |
| 152 | 14.6 | Complete launch readiness and production operations |  | 5d? | 2026-11-16 | 2026-11-20 | 151 | 2027-03-11 | 2027-03-17 | Pilot / Operations |
| 153 | 14.M | Milestone: Phase 14 complete | milestone | 0d? | 2026-11-20 | 2026-11-20 | 152 | 2027-03-17 | 2027-03-17 | Pilot / Operations |

Notes:
- 146: The product can onboard paying users, support them and operate reliably in production.
- 147: Add payment or subscription flow once the pilot value is proven.
- 148: Prepare for advocate/provider/organisation access if required.
- 149: Create operational support channels and self-help content.
- 150: Explain the product safely and clearly without overclaiming.
- 151: Prepare screenshots, copy, privacy details and review material.
- 152: Confirm monitoring, incident response, backups, support and release process.
- 153: The product can onboard paying users, support them and operate reliably in production.
